Schedule from GanttProject, 2013-03-01 to 2013-09-23.

## Calendars

- Project calendar: Mon-Fri working; Sat-Sun off.

## Resources

| Resource |
| --- |
| Björn (SYSTOPIA) |
| Paul (delius) |
| Olaf (SfE) |
| Xavier (TttP) |
| Joe (JMA Consulting) |
| Fabian (SYSTOPIA) |
| Chris (delius) |

## Schedule

| ID | WBS | Task | Duration | Start | Finish | Predecessors | Complete | Resources |
| --- | --- | --- | --- | --- | --- | --- | --- | --- |
| 1 | 1 | **Definition Feature Requirements** | 17d | 2013-04-01 | 2013-04-23 |  | 100% |  |
| 2 | 1.1 | User Stories & required Features SYSTOPIA | 17d | 2013-04-01 | 2013-04-23 |  | 100% |  |
| 3 | 1.2 | User & required Features delius | 17d | 2013-04-01 | 2013-04-23 |  | 100% |  |
| 4 | 1.3 | User & required Features SfE | 17d | 2013-04-01 | 2013-04-23 |  | 100% |  |
| 5 | 2 | **CiviBanking** | 131d | 2013-03-01 | 2013-08-30 |  | 11% |  |
| 6 | 2.1 | **CiviBanking extension framework** | 74d | 2013-03-01 | 2013-06-12 |  | 21% |  |
| 7 | 2.1.1 | CiviBanking extension | 1d | 2013-03-01 | 2013-03-01 |  |  |  |
| 8 | 2.1.2 | CiviBanking data model | 23d | 2013-04-01 | 2013-05-01 |  | 25% | Paul (delius) |
| 9 | 2.1.3 | CiviBanking XML & DAO generation | 3d | 2013-05-02 | 2013-05-06 | 33 |  | Björn (SYSTOPIA) |
| 10 | 2.1.4 | **CiviBanking API** | 15d | 2013-05-23 | 2013-06-12 |  |  |  |
| 11 | 2.1.4.1 | accounts API | 3d | 2013-05-23 | 2013-05-27 | 34 |  | Björn (SYSTOPIA); Xavier (TttP) |
| 12 | 2.1.4.2 | payments / statements API | 15d | 2013-05-23 | 2013-06-12 | 34 |  | Björn (SYSTOPIA); Xavier (TttP) |
| 13 | 2.2 | design mockups | 12d | 2013-04-01 | 2013-04-16 |  | 100% |  |
| 14 | 2.3 | **Payment Importer** | 1d | 2013-05-24 | 2013-05-24 | 36 |  | Björn (SYSTOPIA) |
| 15 | 2.3.1 | Payment Importer plugin architecture | 1d | 2013-05-24 | 2013-05-24 |  |  |  |
| 16 | 2.3.2 | Payment Importer plugin base class | 1d | 2013-05-24 | 2013-05-24 |  |  |  |
| 17 | 2.3.3 | **Basic Payment Importer plugins** | 1d | 2013-05-24 | 2013-05-24 |  |  |  |
| 18 | 2.3.3.1 | BE:CODA plugin | 1d | 2013-05-24 | 2013-05-24 |  |  | Paul (delius); Chris (delius) |
| 19 | 2.4 | BankAccount Manager | 15d | 2013-05-28 | 2013-06-17 | 11 |  | Olaf (SfE) |
| 20 | 2.5 | Payment Manager | 10d | 2013-06-14 | 2013-06-27 | 12, 14 |  | Björn (SYSTOPIA) |
| 21 | 2.6 | Statement Manager | 15d | 2013-08-09 | 2013-08-29 | 12, 25 |  | Björn (SYSTOPIA) |
| 22 | 2.7 | **Matching engine** | 1d | 2013-06-28 | 2013-06-28 | 12, 20 |  | Björn (SYSTOPIA) |
| 23 | 2.7.1 | Matcher plugin architecture | 1d | 2013-06-28 | 2013-06-28 |  |  | Björn (SYSTOPIA) |
| 24 | 2.7.2 | Matcher plugin base class | 1d | 2013-06-28 | 2013-06-28 |  |  |  |
| 25 | 2.8 | Suggestion Workbench | 20d | 2013-07-12 | 2013-08-08 | 12, 22 |  | Björn (SYSTOPIA) |

| ID | WBS | Task | Duration | Start | Finish | Predecessors | Complete | Resources |
| --- | --- | --- | --- | --- | --- | --- | --- | --- |
| 26 | 2.9 | **Payment Exporter** | 1d | 2013-08-30 | 2013-08-30 | 21, 36 |  | Björn (SYSTOPIA) |
| 27 | 2.9.1 | Payment Exporter plugin architecture | 1d | 2013-08-30 | 2013-08-30 |  |  |  |
| 28 | 2.9.2 | Payment Exporter plugin base class | 1d | 2013-08-30 | 2013-08-30 |  |  |  |
| 29 | 2.9.3 | Basic PaymentExporter plugins | 1d | 2013-08-30 | 2013-08-30 |  |  |  |
| 30 | 3 | **CiviSDD** | 147d | 2013-03-01 | 2013-09-23 |  | 22% |  |
| 31 | 3.1 | **CiviSDD extension framework** | 60d | 2013-03-01 | 2013-05-23 |  | 64% |  |
| 32 | 3.1.1 | CiviSDD extension | 1d | 2013-03-01 | 2013-03-01 |  |  |  |
| 33 | 3.1.2 | CiviSDD data model | 23d | 2013-04-01 | 2013-05-01 |  | 70% | Paul (delius) |
| 34 | 3.1.3 | CiviSDD XML & DAO generation | 5d | 2013-05-02 | 2013-05-08 | 33 | 80% | Xavier (TttP) |
| 35 | 3.1.4 | **CiviSDD API** | 1d | 2013-05-23 | 2013-05-23 |  |  |  |
| 36 | 3.1.4.1 | SEPA API? (mandates, transactions, modes...) | 1d | 2013-05-23 | 2013-05-23 | 34 |  | Olaf (SfE) |
| 37 | 3.1.5 | CiviSDDLogic class | 1d | 2013-03-01 | 2013-03-01 |  |  |  |
| 38 | 3.2 | Mandate Importer | 10d | 2013-08-27 | 2013-09-09 | 36, 40 |  | Olaf (SfE) |
| 39 | 3.3 | Mandate Manager | 15d | 2013-06-13 | 2013-07-03 | 12, 36 |  | Olaf (SfE) |
| 40 | 3.4 | Mandate Documenter | 10d | 2013-08-13 | 2013-08-26 | 36, 44 |  | Olaf (SfE) |
| 41 | 3.5 | **SDD Payment Processor** | 58d | 2013-07-04 | 2013-09-23 |  |  |  |
| 42 | 3.5.1 | SDD Payment Processor basics | 10d | 2013-07-04 | 2013-07-17 | 36, 39 |  | Olaf (SfE) |
| 43 | 3.5.2 | finish SDD Payment Processor | 10d | 2013-09-10 | 2013-09-23 | 38, 42 |  | Olaf (SfE) |
| 44 | 3.6 | Batch Manager | 13d | 2013-07-25 | 2013-08-12 | 36, 45 |  | Olaf (SfE) |
| 45 | 3.7 | XML Exporter | 5d | 2013-07-18 | 2013-07-24 | 36, 42 |  | Paul (delius); Olaf (SfE) |
| 46 | 4 | Code Sprint | 2d | 2013-05-09 | 2013-05-10 | 34 |  |  |
| 47 | 5 | automate pre-notification | 10d | 2013-06-17 | 2013-06-28 | 46 |  |  |
